How a schedule from MS Project changed from version to version. A marks actual dates.

## Version 1 (saved 2014-07-30, file 智能家居_项目计划 v1.1.0 20140720.mpp)

Note of the change: SmartHome

| ID | WBS | Task | Duration | Start | Finish | Complete | Total float | Constraint |
| --- | --- | --- | --- | --- | --- | --- | --- | --- |
| 1 | 1 | **需求设计** | 19.06d | 2014-05-20 | 2014-06-13 A | 100% |  |  |
| 2 |  | 需求调研 | 9d | 2014-06-03 A | 2014-06-13 A | 100% |  |  |
| 3 |  | 编写用户需求规格说明书 | 6.94d | 2014-06-02 A | 2014-06-11 A | 100% |  | finish no earlier than 2014-06-10 |
| 4 |  | 需求原型 | 2d | 2014-06-11 A | 2014-06-13 A | 100% |  |  |
| 5 |  | 接口设计 | 1d | 2014-06-12 A | 2014-06-13 A | 100% |  |  |
| 6 | 5 | **系统设计** | 7d | 2014-06-17 A | 2014-06-25 A | 100% |  |  |
| 7 |  | 概要设计说明书 | 1d | 2014-06-17 A | 2014-06-17 A | 100% |  | finish no earlier than 2014-06-17 |
| 8 |  | 用户界面原型设计 | 0.94d | 2014-06-18 A | 2014-06-19 A | 100% |  | finish no earlier than 2014-06-18 |
| 9 |  | 数据库设计 | 2.94d | 2014-06-19 A | 2014-06-24 A | 100% |  | finish no earlier than 2014-06-23 |
| 10 |  | 详细设计 | 1d | 2014-06-24 A | 2014-06-25 A | 100% |  | start no earlier than 2014-06-24 |
| 11 | 3 | **开发计划** | 19d | 2014-07-22 | 2014-08-15 | 48% |  |  |
| 12 | 3.1 | **临时任务（每周动态）** | 2d | 2014-07-22 | 2014-07-23 |  |  |  |
| 13 |  | APP端主题选型 | 15.5h | 2014-07-22 | 2014-07-23 |  | 27d | finish no earlier than 2014-07-23 |
| 14 |  | 短信服务程序搭建 | 15.5h | 2014-07-22 | 2014-07-23 |  | 27d | finish no earlier than 2014-07-23 |
| 15 |  | 整理业务服务端到数据采集云的WS接口说明 | 1d? | 2014-07-22 | 2014-07-23 |  |  |  |
| 16 | 3.2 | **[SH02]智能家居服务端** | 5d | 2014-07-22 | 2014-07-29 | 89% |  |  |
| 17 | 3.2.1 | **[SH02_03]设备管理** | 1d | 2014-07-22 | 2014-07-23 | 100% |  |  |
| 18 |  | [SH02_03_02]设备管理 | 47.5h | 2014-07-21 A | 2014-07-29 A | 100% |  |  |
| 19 | 3.2.2 | **[SH02_15]实时数据** | 1d | 2014-07-21 A | 2014-07-22 | 100% |  |  |
| 20 |  | [SH02_15_01]实时传感器数据查询 | 55.5h | 2014-07-21 A | 2014-07-29 A | 100% |  |  |
| 21 | 3.2.3 | **[SH02_06]报警信息** | 1d | 2014-07-22 | 2014-07-23 |  |  |  |
| 22 |  | [SH02_06_01]报警信息管理 | 8h | 2014-07-21 A | 2014-07-23 |  | 0d |  |
| 23 | 3.2.4 | **[SH02_07]历史数据分析** | 3d | 2014-07-23 | 2014-07-25 | 93% |  |  |
| 24 |  | [SH02_07_02]过去7天历史数据分析 | 55.5h | 2014-07-21 A | 2014-07-29 A | 100% |  | finish no earlier than 2014-07-23 |
| 25 |  | [SH02_07_03]历史报警数据分析 | 4h | 2014-07-21 A | 2014-07-23 |  | 2.44d |  |
| 26 | 3.2.5 | **[SH02_11]信息推送** | 1d | 2014-07-21 A | 2014-07-22 |  |  |  |
| 27 |  | [SH02_11_01]推送 | 8h | 2014-07-21 A | 2014-07-22 |  | 28.94d | start no earlier than 2014-07-21 |
| 28 | 3.2.6 | **[SH02_12]讨论区** | 2d | 2014-07-22 | 2014-07-23 A | 100% |  |  |
| 29 |  | [SH02_12_01]讨论 | 31.5h | 2014-07-18 A | 2014-07-23 A | 100% |  | finish no earlier than 2014-07-23 |
| 30 | 3.2.7 | **[SH02_13]用户反馈** | 1d | 2014-07-23 | 2014-07-24 | 100% |  |  |
| 31 |  | [SH02_13_01]用户反馈 | 3.94d | 2014-07-18 A | 2014-07-23 A | 100% |  | start no earlier than 2014-07-23 |
| 32 | 3.2.8 | **[SH02_12]帮助中心** | 1d | 2014-07-24 A | 2014-07-25 |  |  |  |
| 33 |  | [SH02_12_01]帮助中心 | 1d | 2014-07-24 A | 2014-07-25 |  | 25.94d | start no earlier than 2014-07-24 |
| 34 | 3.3 | **UE设计** | 40d | 2014-06-23 | 2014-08-15 |  |  |  |
| 35 |  | 服务端UE整体设计 | 30d | 2014-06-23 | 2014-08-04 |  | 19.94d | start no earlier than 2014-06-23 |
| 36 |  | APP端UE整体设计 | 30d | 2014-06-23 | 2014-08-04 |  | 19.94d | start no earlier than 2014-06-23 |
| 37 |  | 风格设计 | 30d | 2014-06-23 | 2014-08-04 |  | 19.94d | start no earlier than 2014-06-23 |
| 38 |  | UI设计 | 30d | 2014-06-23 | 2014-08-04 |  | 19.94d | start no earlier than 2014-06-23 |
| 39 | 3.4 | **[SH01]智能家居移动端开发（第一阶段）** | 20.06d | 2014-06-26 A | 2014-07-23 | 99% |  |  |
| 40 | 3.4.1 | **[SH01_01]设备管理** | 12.06d | 2014-06-26 A | 2014-07-11 A | 100% |  |  |
| 41 | 3.4.1.1 | **[SH01_01_01]配置设备** | 12.06d | 2014-06-26 A | 2014-07-11 A | 100% |  |  |
| 42 |  | [SH01_01_01_02]发现设备 | 11.94d | 2014-06-26 A | 2014-07-11 A | 100% |  | finish no earlier than 2014-07-07 |
| 43 |  | [SH01_01_01_03]查看已发现设备 | 3.94d | 2014-07-08 A | 2014-07-11 A | 100% |  | finish no earlier than 2014-07-10 |
| 44 |  | [SH01_01_01_04]删除设备 | 0.94d | 2014-07-11 A | 2014-07-11 A | 100% |  | finish no earlier than 2014-07-11 |
| 45 | 3.4.2 | **[SH01_02]数据管理** | 8d | 2014-07-11 A | 2014-07-22 A | 100% |  |  |
| 46 | 3.4.2.1 | **[SH01_02_01]查看历史信息** | 8d | 2014-07-11 A | 2014-07-22 A | 100% |  |  |
| 47 |  | [SH01_02_01_03]查看历史明细信息 | 7.94d | 2014-07-11 A | 2014-07-22 A | 100% |  | finish no earlier than 2014-07-22 |
| 48 | 3.4.2.2 | **[SH01_02_02]更新显示传感器明细** | 3d | 2014-07-18 A | 2014-07-22 A | 100% |  |  |
| 49 |  | [SH01_02_02_01]手动更新 | 2.94d | 2014-07-18 A | 2014-07-22 A | 100% |  | finish no earlier than 2014-07-15 |
| 50 |  | [SH01_02_02_02]自动更新 | 0d | 2014-07-18 A | 2014-07-18 A | 100% |  | finish no earlier than 2014-07-23 |
| 51 | 3.4.3 | **[SH01_03]用户管理** | 17d | 2014-06-26 A | 2014-07-18 A | 100% |  |  |
| 52 | 3.4.3.1 | **[SH01_03_02]用户认证** | 17d | 2014-06-26 A | 2014-07-18 A | 100% |  |  |
| 53 |  | [SH01_03_02_01] 新建账号 | 2.94d | 2014-06-26 A | 2014-06-30 A | 100% |  | finish no earlier than 2014-06-30 |
| 54 |  | [SH01_03_02_02] 忘记密码 | 4.94d | 2014-07-10 A | 2014-07-16 A | 100% |  | start no earlier than 2014-07-10 |
| 55 |  | [SH01_03_02_03] 修改密码 | 7.5h | 2014-07-16 A | 2014-07-16 A | 100% |  | start no earlier than 2014-07-16 |
| 56 |  | [SH01_03_02_04] 账号登陆 | 16h | 2014-07-17 A | 2014-07-18 A | 100% |  |  |
| 57 | 3.4.4 | **[SH01_04]服务器管理** | 4d | 2014-07-07 A | 2014-07-11 | 100% |  |  |
| 58 | 3.4.4.1 | **[SH01_04_02]服务器交互** | 0.94d | 2014-07-07 A | 2014-07-07 A | 100% |  |  |
| 59 |  | [SH01_04_02_01] 推送 | 7.5h | 2014-07-07 A | 2014-07-07 A | 100% |  |  |
| 60 |  | [SH01_04_02_01] 报警 | 7.5h | 2014-07-07 A | 2014-07-07 A | 100% |  |  |
| 61 | 3.4.5 | **[SH01_05]软件功能** | 5d | 2014-07-14 A | 2014-07-18 A | 100% |  |  |
| 62 | 3.4.5.1 | **[SH01_05_01]个性化** | 5d | 2014-07-14 A | 2014-07-18 A | 100% |  |  |
| 63 |  | [SH01_05_01_02] 用户反馈 | 2.94d | 2014-07-14 A | 2014-07-16 A | 100% |  |  |
| 64 |  | [SH01_05_01_03] 讨论区 | 3d | 2014-07-16 A | 2014-07-18 A | 100% |  |  |
| 65 | 3.5 | **[SH01]智能家居移动端开发（第二阶段）** | 5d | 2014-07-21 A | 2014-07-25 | 92% |  |  |
| 66 | 3.5.1 | **[SH01_01]设备管理** | 2d | 2014-07-21 | 2014-07-22 | 95% |  |  |
| 67 | 3.5.1.1 | **[SH01_01_01]配置设备** | 2d | 2014-07-21 | 2014-07-22 | 95% |  |  |
| 68 |  | [SH01_01_01_02]发现设备 | 47.5h | 2014-07-22 A | 2014-07-29 A | 100% |  | finish no earlier than 2014-07-22 |
| 69 |  | [SH01_01_01_03]查看已发现设备 | 4h | 2014-07-22 A | 2014-07-22 |  | 28.44d | start no earlier than 2014-07-22 |
| 70 |  | [SH01_01_01_04]删除设备 | 31.5h | 2014-07-22 A | 2014-07-25 A | 100% |  | start no earlier than 2014-07-22 |

| ID | WBS | Task | Duration | Start | Finish | Complete | Total float | Constraint |
| --- | --- | --- | --- | --- | --- | --- | --- | --- |
| 71 | 3.5.2 | **[SH01_02]数据管理** | 5d | 2014-07-21 A | 2014-07-25 | 90% |  |  |
| 72 | 3.5.2.1 | **[SH01_02_01]查看历史信息** | 2d | 2014-07-23 | 2014-07-25 | 76% |  |  |
| 73 |  | [SH01_02_01_02]查看历史报警信息 | 10h | 2014-07-24 A | 2014-07-25 |  | 25.69d | start no earlier than 2014-07-23 |
| 74 |  | [SH01_02_01_03]查看历史明细信息 | 31.5h | 2014-07-24 A | 2014-07-29 A | 100% |  | start no earlier than 2014-07-23 |
| 75 | 3.5.2.2 | **[SH01_02_02]更新显示传感器明细** | 3d | 2014-07-23 A | 2014-07-25 A | 100% |  |  |
| 76 |  | [SH01_02_02_01]手动更新 | 2.94d | 2014-07-23 A | 2014-07-25 A | 100% |  | start no earlier than 2014-07-23 |
| 77 |  | [SH01_02_02_02]自动更新 | 15.5h | 2014-07-24 A | 2014-07-25 A | 100% |  | finish no earlier than 2014-07-24 |
| 78 | 3.5.2.3 | **[SH01_02_04]分享（微博、微信）** | 1d | 2014-07-23 | 2014-07-23 | 93% |  |  |
| 79 |  | [SH01_02_04_01] 分享选中的历史 | 55.5h | 2014-07-21 A | 2014-07-29 A | 100% |  | finish no earlier than 2014-07-21 |
| 80 |  | [SH01_02_04_03] 分享选中的传感器实时数据 | 4h | 2014-07-21 A | 2014-07-21 |  | 29.44d | start no earlier than 2014-07-21 |
| 81 | 3.5.3 | **[SH01_03]用户管理** | 3d | 2014-07-21 A | 2014-07-23 | 91% |  |  |
| 82 | 3.5.3.1 | **[SH01_03_02]用户认证** | 3d | 2014-07-21 A | 2014-07-23 | 91% |  |  |
| 83 |  | [SH01_03_02_01] 新建账号 | 39.5h | 2014-07-21 A | 2014-07-25 A | 100% |  | start no earlier than 2014-07-21 |
| 84 |  | [SH01_03_02_02] 忘记密码 | 4h | 2014-07-22 A | 2014-07-22 |  | 28.44d | start no earlier than 2014-07-22 |
| 85 |  | [SH01_03_02_03] 修改密码 | 4h | 2014-07-22 A | 2014-07-22 |  | 28.44d | start no earlier than 2014-07-22 |
| 86 |  | [SH01_03_02_04] 账号登陆 | 40h | 2014-07-22 A | 2014-07-28 A | 100% |  |  |
| 87 | 3.5.4 | **[SH01_05]软件功能** | 3d | 2014-07-23 | 2014-07-25 | 92% |  |  |
| 88 | 3.5.4.1 | **[SH01_05_01]个性化** | 2d | 2014-07-21 | 2014-07-22 | 100% |  |  |
| 89 |  | [SH01_05_01_02] 用户反馈 | 15.5h | 2014-07-22 A | 2014-07-23 A | 100% |  | finish no earlier than 2014-07-22 |
| 90 |  | [SH01_05_01_03] 讨论区 | 16h | 2014-07-22 A | 2014-07-23 A | 100% |  |  |
| 91 | 3.5.4.2 | **[SH01_05_02]通用功能** | 2d | 2014-07-24 | 2014-07-25 | 89% |  |  |
| 92 |  | [SH01_05_02_01] 关于 | 15.5h | 2014-07-24 A | 2014-07-25 A | 100% |  | start no earlier than 2014-07-24 |
| 93 |  | [SH01_05_02_02] 帮助 | 2h | 2014-07-24 A | 2014-07-24 |  | 26.69d | start no earlier than 2014-07-24 |
| 94 |  | [SH01_05_02_03] 开发者名单 | 7.5h | 2014-07-25 A | 2014-07-25 A | 100% |  | start no earlier than 2014-07-24 |
| 95 |  | [SH01_05_02_04] 退出 | 56h | 2014-07-21 A | 2014-07-29 A | 100% |  | finish no earlier than 2014-07-24 |
| 96 |  | [SH01_05_02_05] 版本更新 | 1d | 2014-07-21 A | 2014-07-22 |  |  |  |
| 97 | 4 | **测试** | 45d | 2014-06-25 | 2014-08-26 |  |  |  |
| 98 |  | 制定测试计划 | 1d | 2014-06-25 | 2014-06-26 |  |  |  |
| 99 |  | 测试用例设计 | 6d | 2014-06-27 | 2014-07-04 |  |  |  |
| 100 |  | 测试用例评审、完善 | 2d | 2014-07-04 | 2014-07-07 |  |  |  |
| 101 |  | 第一轮测试 | 4d | 2014-07-21 | 2014-07-25 |  |  |  |
| 102 |  | bug修改 | 5d | 2014-07-21 | 2014-07-25 |  |  |  |
| 103 |  | 第二轮测试 | 5d | 2014-07-28 | 2014-08-01 |  |  |  |
| 104 |  | bug修改 | 5d | 2014-07-28 | 2014-08-01 |  |  |  |
| 105 |  | 第三轮测试 | 5d | 2014-08-05 | 2014-08-12 |  |  |  |
| 106 |  | bug修改 | 5d | 2014-08-05 | 2014-08-12 |  |  |  |
| 107 |  | 测试报告&用户手册 | 3d | 2014-08-21 | 2014-08-26 |  |  |  |
| 108 |  | 公测 | 8d | 2014-08-08 | 2014-08-20 |  |  |  |
| 109 |  | 验收 | 1d | 2014-08-26 | 2014-08-27 |  |  |  |
| 110 |  | 发布维护 | 7.94d | 2014-08-19 | 2014-08-28 |  | 1d | finish no earlier than 2014-08-28 |
| 111 |  | 结项验收 | 1d | 2014-08-29 | 2014-08-29 |  |  |  |
| 112 |  | 后续维护升级 | 1d? | 2014-06-03 | 2014-06-03 |  |  |  |

## Version 2 (saved 2014-08-28, file 智能家居_项目计划 v1.2.0 20140801.mpp)

Note of the change: SmartHome

Last finish stays 2014-08-29. Complete tasks 40 → 75.

Added:

| ID | Task | Duration | Start | Finish | Resources |
| --- | --- | --- | --- | --- | --- |
| 97 | **8月10日之前的联调工作（不分APP和服务端）** | 0d | 2014-06-03 | 2014-06-03 |  |
| 98 | **数据采集** | 0d | 2014-06-03 | 2014-06-03 |  |
| 99 | 采集到数据 | 8h | 2014-08-05 A | 2014-08-05 A | 姚栋 |
| 100 | 数据能够展示到app | 8h | 2014-08-05 A | 2014-08-05 A | 王贺喜 |
| 101 | **主页面显示** | 0.94d | 2014-08-05 A | 2014-08-05 A |  |
| 102 | 卡通人物表情对应传感器状态的分布 | 7.5h | 2014-08-05 A | 2014-08-05 A | 曾凡; 闫威; 苌帅; 李留品 |
| 103 | 主页面传感器内容刷新 | 7.5h | 2014-08-05 A | 2014-08-05 A | 曾凡; 闫威; 苌帅; 李留品 |
| 104 | **配置设备** | 1.94d | 2014-08-07 A | 2014-08-09 A |  |
| 105 | 配置设备联网 | 15.5h | 2014-08-07 A | 2014-08-08 A | 曾凡; 闫威; 苌帅; 李留品 |
| 106 | 配置页面/功能/流程优化 | 15.5h | 2014-08-07 A | 2014-08-09 A | 曾凡; 闫威; 苌帅; 李留品 |
| 107 | **用户管理** | 1.94d | 2014-08-05 A | 2014-08-06 A |  |
| 108 | 图片问题 | 15.5h | 2014-08-05 A | 2014-08-06 A | 曾凡; 闫威; 苌帅; 李留品 |
| 109 | 返回展示问题 | 7.5h | 2014-08-06 A | 2014-08-06 A | 曾凡; 闫威; 苌帅; 李留品 |
| 110 | **消息推送** | 13.94d | 2014-08-07 A | 2014-08-26 A |  |
| 111 | 验证码短信推送 | 111.5h | 2014-08-07 A | 2014-08-26 A | 曾凡; 闫威; 苌帅; 李留品 |
| 112 | 管理员手动推送 | 111.5h | 2014-08-07 A | 2014-08-26 A | 曾凡; 闫威; 苌帅; 李留品 |
| 113 | **UI改进** | 1.94d | 2014-08-05 A | 2014-08-06 A |  |
| 114 | 用户管理 | 7.5h | 2014-08-06 A | 2014-08-06 A | 曾凡; 闫威; 苌帅; 李留品 |
| 115 | 设备配置 | 7.5h | 2014-08-06 A | 2014-08-06 A | 曾凡; 闫威; 苌帅; 李留品 |
| 116 | 讨论区/留言板 | 7.5h | 2014-08-05 A | 2014-08-05 A | 曾凡; 闫威; 苌帅; 李留品 |
| 117 | **部署** | 1.94d | 2014-08-05 A | 2014-08-06 A |  |
| 118 | 部署采集服务到阿里云 | 15.5h | 2014-08-05 A | 2014-08-06 A | 苌帅; 王贺喜 |
| 119 | 部署接口服务到阿里云 | 15.5h | 2014-08-05 A | 2014-08-06 A | 苌帅; 姚栋 |
| 120 | 部署APP业务服务到阿里云 | 15.5h | 2014-08-05 A | 2014-08-06 A | 苌帅; 王贺喜 |
| 121 | 部署汉威云业务服务到阿里云 | 15.5h | 2014-08-05 A | 2014-08-06 A | 苌帅; 王贺喜 |
| 122 | **综合调试** | 18.94d | 2014-08-01 A | 2014-08-27 A |  |
| 123 | 内部公测 | 151.5h | 2014-08-01 A | 2014-08-27 A | 公司全体人员 |
| 124 | 直接通过“问题反馈”功能获取问题列表 | 151.5h | 2014-08-01 A | 2014-08-27 A |  |

Changed:

| ID | Task | Start | Finish | Duration | Complete | Total float |
| --- | --- | --- | --- | --- | --- | --- |
| 11 | **开发计划** |  |  |  | 48% → 54% |  |
| 16 | **[SH02]智能家居服务端** |  |  |  | 89% → 92% |  |
| 23 | **[SH02_07]历史数据分析** |  |  |  | 93% → 100% |  |
| 25 | [SH02_07_03]历史报警数据分析 |  | 2014-07-23 → 2014-07-30 A (+7d) | 4h → 47.5h | 0% → 100% | 2.44d → none |
| 65 | **[SH01]智能家居移动端开发（第二阶段）** |  |  |  | 92% → 97% |  |
| 66 | **[SH01_01]设备管理** |  |  |  | 95% → 100% |  |
| 67 | **[SH01_01_01]配置设备** |  |  |  | 95% → 100% |  |
| 69 | [SH01_01_01_03]查看已发现设备 |  | 2014-07-22 → 2014-07-30 A (+8d) | 4h → 55.5h | 0% → 100% | 28.44d → none |
| 71 | **[SH01_02]数据管理** |  |  |  | 90% → 100% |  |
| 72 | **[SH01_02_01]查看历史信息** |  |  |  | 76% → 100% |  |
| 73 | [SH01_02_01_02]查看历史报警信息 |  | 2014-07-25 → 2014-07-30 A (+5d) | 10h → 39.5h | 0% → 100% | 25.69d → none |
| 78 | **[SH01_02_04]分享（微博、微信）** |  |  |  | 93% → 100% |  |
| 80 | [SH01_02_04_03] 分享选中的传感器实时数据 |  | 2014-07-21 → 2014-07-30 A (+9d) | 4h → 63.5h | 0% → 100% | 29.44d → none |
| 87 | **[SH01_05]软件功能** |  |  |  | 92% → 95% |  |
| 91 | **[SH01_05_02]通用功能** |  |  |  | 89% → 94% |  |
| 93 | [SH01_05_02_02] 帮助 |  | 2014-07-24 → 2014-07-30 A (+6d) | 2h → 39.5h | 0% → 100% | 26.69d → none |
| 125 | **测试** | 2014-06-25 A | 2014-08-26 A |  | 0% → 100% |  |
| 126 | 制定测试计划 | 2014-06-25 A | 2014-06-26 A | 1d → 2d | 0% → 100% |  |
| 127 | 测试用例设计 | 2014-06-27 A | 2014-07-04 A |  | 0% → 100% |  |
| 128 | 测试用例评审、完善 | 2014-07-04 A | 2014-07-07 A |  | 0% → 100% |  |
| 129 | 第一轮测试 | 2014-07-21 A | 2014-07-25 A | 4d → 5d | 0% → 100% |  |
| 130 | bug修改 | 2014-07-21 A | 2014-07-25 A |  | 0% → 100% |  |
| 131 | 第二轮测试 | 2014-07-28 A | 2014-08-01 A |  | 0% → 100% |  |
| 132 | bug修改 | 2014-07-28 A | 2014-08-01 A |  | 0% → 100% |  |
| 133 | 第三轮测试 | 2014-08-05 A | 2014-08-12 A | 5d → 6d | 0% → 100% |  |
| 134 | bug修改 | 2014-08-05 A | 2014-08-12 A | 5d → 6d | 0% → 100% |  |
| 135 | 测试报告&用户手册 | 2014-08-21 A | 2014-08-26 A | 3d → 4d | 0% → 100% |  |
| 136 | 公测 | 2014-08-08 A | 2014-08-20 A | 8d → 9d | 0% → 100% |  |
